# 亲情电话应用端软件

Schedule from a web Gantt chart, 2024-02-01 to 2025-03-10.
Sundays are off

## Schedule

| ID | WBS | Task | Duration | Start | Finish | Predecessors | inPeople | Status |
| --- | --- | --- | --- | --- | --- | --- | --- | --- |
| 2 | 1 | **需求** | 11d | 2024-12-23 | 2025-01-03 |  |  |  |
| 3 | 1.1 | 需求分析与原型设计 | 5d | 2024-12-23 | 2024-12-27 |  | 邓振祥 |  |
| 4 | 1.2 | 原型评审与修订 | 6d | 2024-12-30 | 2025-01-04 | 3 | 邓振祥 | waiting |
| 5 | 2 | **设计** | 9d | 2025-01-07 | 2025-01-16 |  |  |  |
| 6 | 2.1 | MQTT协议设计与评审 | 3d | 2025-01-07 | 2025-01-09 | 4 | 邓振祥 | waiting |
| 7 | 2.2 | 公众号H5与WEB端构架与UI选型 | 1d | 2025-01-10 | 2025-01-10 | 6 |  | waiting |
| 8 | 2.3 | 数据库设计 | 3d | 2025-01-11 | 2025-01-14 | 7 | 邓振祥 | waiting |
| 9 | 2.4 | 整体技术框架搭建 | 2d | 2025-01-15 | 2025-01-16 | 8 | 邓振祥 | waiting |
| 10 | 3 | **开发与联调** | 45d | 2025-01-17 | 2025-03-10 |  |  |  |
| 11 | 3.1 | **服务商前后端开发（Web）** | 1d | 2025-01-17 | 2025-01-17 | 9 | 邓振祥 | waiting |
| 12 | 3.1.1 | 首页看板 | 1d | 2025-01-17 | 2025-01-17 |  |  | waiting |
| 13 | 3.1.2 | 配置：学校、话机、套餐管理 | 1d | 2025-01-17 | 2025-01-17 |  |  | waiting |
| 14 | 3.1.3 | 数据：学生注册、交易流水、通话记录 | 1d | 2025-01-17 | 2025-01-17 |  |  | waiting |
| 15 | 3.1.4 | 统计分析：收入统计、学生注册统计、设备通话统计 | 1d | 2025-01-17 | 2025-01-17 |  |  | waiting |
| 16 | 3.2 | **平台管理前后端开发（Web）** | 1d | 2025-01-18 | 2025-01-18 | 11 | 邓振祥 | waiting |
| 17 | 3.2.1 | 首页看板 | 1d | 2025-01-18 | 2025-01-18 |  |  | waiting |
| 18 | 3.2.2 | 服务商管理 | 1d | 2025-01-18 | 2025-01-18 |  |  | waiting |
| 19 | 3.3 | **公众号与家长端（H5）开发** | 1d | 2025-01-20 | 2025-01-20 | 16 | 邓振祥 | waiting |
| 20 | 3.3.1 | 公众号页面开发 | 1d | 2025-01-20 | 2025-01-20 |  |  | waiting |
| 21 | 3.3.2 | 家长登录与注册 | 1d | 2025-01-20 | 2025-01-20 |  |  | waiting |
| 22 | 3.4 | 公众号开发 | 2d | 2025-01-21 | 2025-01-22 | 19 | 邓振祥 | waiting |
| 23 | 3.5 | 人员管理 | 4d | 2025-01-23 | 2025-01-27 | 22 | 邓振祥 | waiting |
| 24 | 3.6 | 通行规则 | 2d | 2025-01-28 | 2025-01-29 | 23 | 邓振祥 | waiting |
| 25 | 3.7 | 访客预约 | 3d | 2025-01-30 | 2025-02-01 | 24 | 邓振祥 | waiting |
| 26 | 3.8 | 可视对讲 | 3d | 2025-02-03 | 2025-02-05 | 25 | 邓振祥 | waiting |
| 27 | 3.9 | 通行记录 | 2d | 2025-02-06 | 2025-02-07 | 26 | 邓振祥 | waiting |
| 28 | 3.10 | 开门 | 2d | 2025-02-08 | 2025-02-10 | 27 | 邓振祥 | waiting |
| 29 | 3.11 | 通知 | 3d | 2025-02-11 | 2025-02-13 | 28 | 邓振祥 | waiting |
| 30 | 3.12 | 我的 | 2d | 2025-02-14 | 2025-02-15 | 29 | 邓振祥 | waiting |
| 31 | 3.13 | 对讲 | 3d | 2025-02-17 | 2025-02-19 | 30 | 邓振祥 | waiting |
| 32 | 3.14 | 后台与APP端联调 | 9d | 2025-02-20 | 2025-03-01 | 31 | 邓振祥 | waiting |
| 33 | 3.15 | 与设备端联调 | 7d | 2025-03-03 | 2025-03-10 | 32 |  | waiting |

| ID | WBS | Task | Duration | Start | Finish | Predecessors | inPeople | Status |
| --- | --- | --- | --- | --- | --- | --- | --- | --- |
| 34 | 4 | **测试** | 17d | 2024-02-01 | 2024-02-20 |  |  |  |
| 35 | 4.1 | 首轮测试与BUG修复 | 6d | 2024-02-01 | 2024-02-07 |  | 测试部 |  |
| 36 | 4.2 | 第二轮测试与BUG修复 | 5d | 2024-02-19 | 2024-02-23 |  | 测试部 |  |
| 37 | 5 | **发布** | 6d | 2024-02-19 | 2024-02-24 |  |  |  |
| 38 | 5.1 | 文档准备 | 5d | 2024-02-19 | 2024-02-23 |  | 产品部 |  |
| 39 | 5.2 | 生产环境部署 | 1d | 2024-02-26 | 2024-02-26 | 36 | 邓振祥 | waiting |
